# Late

Schedule from MS Project, 2023-11-27 to 2024-03-29.

## Calendars

- Standard: Mon-Fri 08:00-12:00, 13:00-17:00; Sat-Sun off.

## Resources

| Resource |
| --- |
| Võ Ngọc Anh |
| Phạm Thị Thảo Anh |
| Nguyễn Cảnh Đức |
| Lê Xuân Đức |
| Lê Thành Đạt |
| Nguyễn Hồng Nhi |

## Schedule

| ID | WBS | Task | Duration | Start | Finish | Predecessors | Total slack | Free slack | Constraint | Resources | Work |
| --- | --- | --- | --- | --- | --- | --- | --- | --- | --- | --- | --- |
| 1 | 1 | **Xây dựng trang web Thời trang UNI** | 90d | 2023-11-27 | 2024-03-29 |  | 0d |  |  |  | 1208h |
| 2 | 1.1 | **Khảo sát và phân tích yêu cầu** | 15d | 2023-11-27 | 2023-12-15 |  | 21d |  |  |  | 120h |
| 3 | 1.1.1 | **Khảo sát hiện trạng** | 9d | 2023-11-27 | 2023-12-07 |  | 21d |  |  |  | 72h |
| 4 | 1.1.1.1 | Xây dựng nội dung khảo sát | 4d | 2023-11-27 | 2023-11-30 |  | 21d | 0d |  | Lê Thành Đạt | 32h |
| 5 | 1.1.1.2 | Khảo sát phạm vi mô hình hóa nghiệp vụ | 2d | 2023-12-01 | 2023-12-04 | 4 | 25d | 2d |  | Lê Thành Đạt | 16h |
| 6 | 1.1.1.3 | Khảo sát hiện trạng nghiệp vụ cụ thể | 2d | 2023-12-05 | 2023-12-06 | 4 | 23d | 0d |  | Lê Thành Đạt | 16h |
| 7 | 1.1.1.4 | Báo cáo khảo sát | 1d | 2023-12-07 | 2023-12-07 | 5, 6 | 23d | 0d |  | Lê Thành Đạt | 8h |
| 8 | 1.1.2 | Phân tích yêu cầu chức năng | 4d | 2023-12-08 | 2023-12-13 | 7 | 23d | 2d |  | Võ Ngọc Anh | 32h |
| 9 | 1.1.3 | Phân tích yêu cầu phi chức năng | 2d | 2023-12-14 | 2023-12-15 | 7 | 21d | 0d | start no earlier than 2023-12-14 | Võ Ngọc Anh | 16h |
| 10 | 1.2 | **Thiết kế phần mềm** | 29d | 2023-12-08 | 2024-01-17 |  | 27d |  |  |  | 312h |
| 11 | 1.2.1 | **Thiết kế mô hình tổng thể** | 19d | 2023-12-18 | 2024-01-11 | 8, 9 | 21d | 0d |  |  | 152h |
| 12 | 1.2.1.1 | Thiết kế bản vẽ Use case diagram - Đặc tả | 5d | 2023-12-18 | 2023-12-22 | 8 | 21d | 0d |  | Võ Ngọc Anh | 40h |
| 13 | 1.2.1.2 | Thiết kế mô hình Entity - Relationship diagram | 3d | 2023-12-29 | 2024-01-02 | 8 | 26d | 0d |  | Võ Ngọc Anh | 24h |
| 14 | 1.2.1.3 | Thiết kế bản vẽ Class diagram | 3d | 2024-01-03 | 2024-01-05 | 13 | 26d |  |  | Võ Ngọc Anh | 24h |
| 15 | 1.2.1.4 | Thiết kế Activity diagram | 4d | 2023-12-25 | 2023-12-28 | 12 | 21d | 0d |  | Võ Ngọc Anh | 32h |
| 16 | 1.2.1.5 | Thiết kế Sequence diagram | 4d | 2024-01-08 | 2024-01-11 | 15 | 22d |  |  | Võ Ngọc Anh | 32h |
| 17 | 1.2.2 | **Thiết kế chi tiết** | 29d | 2023-12-08 | 2024-01-17 |  | 31d |  |  |  | 160h |
| 18 | 1.2.2.1 | Thiết kế giao diện | 16d | 2023-12-08 | 2023-12-29 | 7 | 34d | 21d |  | Nguyễn Hồng Nhi | 128h |
| 19 | 1.2.2.2 | Thiết kế cơ sở dữ liệu | 4d | 2024-01-12 | 2024-01-17 | 11 | 31d | 25d |  | Võ Ngọc Anh | 32h |
| 20 | 1.3 | **Xây dựng hệ thống** | 44d | 2024-01-12 | 2024-03-13 |  | 0d |  |  |  | 656h |
| 21 | 1.3.1 | **Xây dựng chức năng hệ thống** | 12d | 2024-01-12 | 2024-01-29 | 11 | 13d | 0d |  |  | 176h |
| 22 | 1.3.1.1 | Xây dựng chức năng quản lý đăng nhập | 3d | 2024-01-12 | 2024-01-16 |  | 22d |  |  | Lê Xuân Đức | 24h |
| 23 | 1.3.1.2 | Xây dựng chức năng quản lý danh mục | 2d | 2024-01-17 | 2024-01-18 |  | 20d |  |  | Lê Xuân Đức | 16h |
| 24 | 1.3.1.3 | Xây dựng chức năng quản lý sản phẩm | 2d | 2024-01-19 | 2024-01-22 |  | 18d |  |  | Lê Xuân Đức | 16h |
| 25 | 1.3.1.4 | Xây dựng chức năng quản lý nhà cung cấp | 1d | 2024-01-25 | 2024-01-25 |  | 15d |  |  | Lê Xuân Đức | 8h |
| 26 | 1.3.1.5 | Xây dựng chức năng quản lý hóa đơn | 3d | 2024-01-12 | 2024-01-16 |  | 22d |  |  | Nguyễn Cảnh Đức | 24h |
| 27 | 1.3.1.6 | Xây dựng chức năng quản lý nhân viên | 2d | 2024-01-23 | 2024-01-24 |  | 16d |  |  | Lê Xuân Đức | 16h |
| 28 | 1.3.1.7 | Xây dựng chức năng bán hàng | 3d | 2024-01-17 | 2024-01-19 |  | 19d |  |  | Nguyễn Cảnh Đức | 24h |
| 29 | 1.3.1.8 | Xây dựng chức năng nhập hàng | 3d | 2024-01-22 | 2024-01-24 |  | 16d |  |  | Nguyễn Cảnh Đức | 24h |
| 30 | 1.3.1.9 | Xây dựng chức năng báo cáo thống kê | 3d | 2024-01-25 | 2024-01-29 |  | 13d |  |  | Nguyễn Cảnh Đức | 24h |

| ID | WBS | Task | Duration | Start | Finish | Predecessors | Total slack | Free slack | Resources | Work |
| --- | --- | --- | --- | --- | --- | --- | --- | --- | --- | --- |
| 31 | 1.3.2 | **Xây dựng cơ sở dữ liệu** | 9d | 2024-02-22 | 2024-03-05 | 19, 21, 40 | 0d |  |  | 136h |
| 32 | 1.3.2.1 | CRUD tài khoản | 2d | 2024-02-27 | 2024-02-28 |  | 4d |  | Lê Xuân Đức | 16h |
| 33 | 1.3.2.2 | CRUD sản phẩm | 2d | 2024-02-29 | 2024-03-01 |  | 2d |  | Lê Xuân Đức | 16h |
| 34 | 1.3.2.3 | CRUD danh mục | 1d | 2024-03-04 | 2024-03-04 |  | 1d |  | Lê Xuân Đức | 8h |
| 35 | 1.3.2.4 | CRUD nhà cung cấp | 1d | 2024-03-05 | 2024-03-05 |  | 0d |  | Lê Xuân Đức | 8h |
| 36 | 1.3.2.5 | CRUD hóa đơn | 2d | 2024-03-01 | 2024-03-04 |  | 1d |  | Nguyễn Cảnh Đức | 16h |
| 37 | 1.3.2.6 | CRUD nhân viên | 3d | 2024-02-22 | 2024-02-26 |  | 6d |  | Lê Xuân Đức | 24h |
| 38 | 1.3.2.7 | CRUD Phiếu nhập hàng | 3d | 2024-02-22 | 2024-02-26 |  | 6d |  | Nguyễn Cảnh Đức | 24h |
| 39 | 1.3.2.8 | CRUD bán hàng | 3d | 2024-02-27 | 2024-02-29 |  | 3d |  | Nguyễn Cảnh Đức | 24h |
| 40 | 1.3.3 | **Xây dựng giao diện** | 17d | 2024-01-30 | 2024-02-21 | 18, 21 | 1d | 0d |  | 248h |
| 41 | 1.3.3.1 | Xây dựng giao diện đăng nhập | 3d | 2024-02-06 | 2024-02-08 |  | 10d |  | Lê Xuân Đức | 24h |
| 42 | 1.3.3.2 | Xây dựng giao diện quản lý danh mục | 3d | 2024-02-09 | 2024-02-13 |  | 7d |  | Lê Xuân Đức | 24h |
| 43 | 1.3.3.3 | Xây dựng giao diện quản lý sản phẩm | 3d | 2024-02-14 | 2024-02-16 |  | 4d |  | Lê Xuân Đức | 24h |
| 44 | 1.3.3.4 | Xây dựng giao diện quản lý nhà cung cấp | 3d | 2024-02-19 | 2024-02-21 |  | 1d |  | Lê Xuân Đức | 24h |
| 45 | 1.3.3.5 | Xây dựng giao diện quản lý nhân viên | 3d | 2024-02-06 | 2024-02-08 |  | 10d |  | Nguyễn Cảnh Đức | 24h |
| 46 | 1.3.3.6 | Xây dựng giao diện quản lý hóa đơn | 5d | 2024-01-30 | 2024-02-05 |  | 13d |  | Lê Xuân Đức | 40h |
| 47 | 1.3.3.7 | Xây dựng giao diện bán hàng | 3d | 2024-02-09 | 2024-02-13 |  | 7d |  | Nguyễn Cảnh Đức | 24h |
| 48 | 1.3.3.8 | Xây dựng giao diện nhập hàng | 3d | 2024-02-14 | 2024-02-16 |  | 4d |  | Nguyễn Cảnh Đức | 24h |
| 49 | 1.3.3.9 | Xây dựng giao diện báo cáo thống kê | 5d | 2024-01-30 | 2024-02-05 |  | 13d |  | Nguyễn Cảnh Đức | 40h |
| 50 | 1.3.4 | **Tích hợp** | 7d | 2024-03-05 | 2024-03-13 |  | 0d |  |  | 96h |
| 51 | 1.3.4.1 | Tích hợp chức năng và cơ sở dữ liệu | 6d | 2024-03-06 | 2024-03-13 | 21, 31 | 0d |  | Lê Xuân Đức; Nguyễn Cảnh Đức | 48h |
| 52 | 1.3.4.2 | Tích hợp giao diện và chức năng | 6d | 2024-03-05 | 2024-03-12 | 21, 40 | 1d |  | Lê Xuân Đức; Nguyễn Cảnh Đức | 48h |
| 53 | 1.4 | **Kiểm thử** | 13d | 2024-03-06 | 2024-03-22 |  | 0d |  |  | 80h |
| 54 | 1.4.1 | Test các chức năng | 3d | 2024-03-06 | 2024-03-08 | 31 | 6d |  | Phạm Thị Thảo Anh | 24h |
| 55 | 1.4.2 | Test tích hợp các chức năng | 3d | 2024-03-14 | 2024-03-18 | 50 | 0d |  | Phạm Thị Thảo Anh | 24h |
| 56 | 1.4.3 | Thử nghiệm phần mềm | 2d | 2024-03-19 | 2024-03-20 | 54, 55 | 0d |  | Phạm Thị Thảo Anh | 16h |
| 57 | 1.4.4 | Viết bản cáo kiểm thử | 2d | 2024-03-21 | 2024-03-22 | 56 | 0d |  | Phạm Thị Thảo Anh | 16h |

| ID | WBS | Task | Duration | Start | Finish | Predecessors | Total slack | Resources | Work |
| --- | --- | --- | --- | --- | --- | --- | --- | --- | --- |
| 58 | 1.5 | **Chuyển giao** | 5d | 2024-03-25 | 2024-03-29 |  | 0d |  | 40h |
| 59 | 1.5.1 | Viết tài liệu hướng dẫn | 3d | 2024-03-25 | 2024-03-27 | 53 | 0d | Võ Ngọc Anh | 24h |
| 60 | 1.5.2 | Giao sản phẩm | 2d | 2024-03-28 | 2024-03-29 | 59 | 0d | Lê Thành Đạt | 16h |
